# HospitalRecordsManagement

Schedule from ProjectLibre, 2026-04-13 to 2027-02-26.

## Calendars

- Standard: Mon-Fri 08:00-12:00, 13:00-17:00; Sat-Sun off.

## Resources

| Resource | Rate |
| --- | --- |
| Unassigned |  |
| Project Manager | 120 |
| Business Analyst | 95 |
| Clinical Lead | 110 |
| EHR Vendor Consultant | 160 |
| Integration Developer | 130 |
| Data Migration Specialist | 115 |
| Network/Infrastructure Engineer | 105 |
| Security & Privacy Officer | 115 |
| Test Analyst | 85 |
| Trainer | 80 |

## Schedule

| ID | WBS | Task | Duration | Start | Finish | Predecessors | Baseline start | Baseline finish | Resources |
| --- | --- | --- | --- | --- | --- | --- | --- | --- | --- |
| 1 | 1 | **1 Project Management** | 20d | 2026-04-13 | 2026-05-08 |  | 2026-04-13 | 2026-05-08 |  |
| 2 | 1.1 | 1.1 Project charter approved | 5d | 2026-04-13 | 2026-04-17 |  | 2026-04-13 | 2026-04-17 | Project Manager |
| 3 | 1.2 | 1.2 Stakeholder register & engagement plan | 5d | 2026-04-20 | 2026-04-24 | 2 | 2026-04-20 | 2026-04-24 | Business Analyst; Project Manager |
| 4 | 1.3 | 1.3 PM plan & baseline | 10d | 2026-04-27 | 2026-05-08 | 3 | 2026-04-27 | 2026-05-08 | Project Manager |
| 5 | 1.4 | M1 Planning baseline approved | 0d | 2026-05-08 | 2026-05-08 | 4 | 2026-05-08 | 2026-05-08 |  |
| 6 | 2 | **2 Analysis & Procurement** | 50d | 2026-05-11 | 2026-07-17 |  | 2026-05-11 | 2026-07-17 |  |
| 7 | 2.1 | 2.1 Clinical workflow analysis | 15d | 2026-05-11 | 2026-05-29 | 5 | 2026-05-11 | 2026-05-29 | Business Analyst; Clinical Lead |
| 8 | 2.2 | 2.2 Requirements specification | 15d | 2026-06-01 | 2026-06-19 | 7 | 2026-06-01 | 2026-06-19 | Business Analyst; Clinical Lead |
| 9 | 2.3 | 2.3 Vendor tender & selection | 20d | 2026-06-22 | 2026-07-17 | 8 | 2026-06-22 | 2026-07-17 | Business Analyst; Project Manager |
| 10 | 2.4 | M2 Vendor contract signed | 0d | 2026-07-17 | 2026-07-17 | 9 | 2026-07-17 | 2026-07-17 |  |
| 11 | 3 | **3 System Build** | 65d | 2026-07-20 | 2026-10-16 |  | 2026-07-20 | 2026-10-16 |  |
| 12 | 3.1 | 3.1 Network & hardware upgrade | 30d | 2026-07-20 | 2026-08-28 | 10 | 2026-07-20 | 2026-08-28 | Network/Infrastructure Engineer |
| 13 | 3.2 | 3.2 EHR configuration | 40d | 2026-07-20 | 2026-09-11 | 10 | 2026-07-20 | 2026-09-11 | Clinical Lead; EHR Vendor Consultant |
| 14 | 3.3 | 3.3 Integrations (pathology, radiology, pharmacy) | 25d | 2026-09-14 | 2026-10-16 | 13 | 2026-09-14 | 2026-10-16 | Integration Developer |
| 15 | 3.4 | 3.4 Privacy & security controls | 15d | 2026-09-14 | 2026-10-02 | 13 | 2026-09-14 | 2026-10-02 | Security & Privacy Officer |
| 16 | 4 | **4 Data Migration** | 75d | 2026-06-22 | 2026-10-02 |  | 2026-06-22 | 2026-10-02 |  |
| 17 | 4.1 | 4.1 Data cleansing & mapping | 25d | 2026-06-22 | 2026-07-24 | 8 | 2026-06-22 | 2026-07-24 | Business Analyst; Data Migration Specialist |
| 18 | 4.2 | 4.2 Test data migrations | 15d | 2026-09-14 | 2026-10-02 | 13, 17 | 2026-09-14 | 2026-10-02 | Data Migration Specialist; Test Analyst |
| 19 | 5 | **5 Testing** | 25d | 2026-10-19 | 2026-11-20 |  | 2026-10-19 | 2026-11-20 |  |
| 20 | 5.1 | 5.1 System & integration testing | 15d | 2026-10-19 | 2026-11-06 | 12, 14, 15 | 2026-10-19 | 2026-11-06 | Integration Developer; Test Analyst |
| 21 | 5.2 | 5.2 User acceptance testing | 10d | 2026-11-09 | 2026-11-20 | 18, 20 | 2026-11-09 | 2026-11-20 | Clinical Lead; Test Analyst |
| 22 | 6 | **6 Training & Change Mgmt** | 60d | 2026-09-14 | 2026-12-04 |  | 2026-09-14 | 2026-12-04 |  |
| 23 | 6.1 | 6.1 Training materials & super-users | 20d | 2026-09-14 | 2026-10-09 | 13 | 2026-09-14 | 2026-10-09 | Clinical Lead; Trainer |
| 24 | 6.2 | 6.2 End-user training | 20d | 2026-11-09 | 2026-12-04 | 20, 23 | 2026-11-09 | 2026-12-04 | Trainer |

| ID | WBS | Task | Duration | Start | Finish | Predecessors | Baseline start | Baseline finish | Resources |
| --- | --- | --- | --- | --- | --- | --- | --- | --- | --- |
| 25 | 7 | **7 Deployment** | 25d | 2026-12-04 | 2027-01-08 |  | 2026-12-04 | 2027-01-08 |  |
| 26 | 7.1 | M3 Go-live readiness sign-off | 0d | 2026-12-04 | 2026-12-04 | 21, 24 | 2026-12-04 | 2026-12-04 |  |
| 27 | 7.2 | 7.1 Pilot go-live Site A | 5d | 2026-12-07 | 2026-12-11 | 26 | 2026-12-07 | 2026-12-11 | Clinical Lead; Project Manager |
| 28 | 7.3 | 7.2 Post-pilot review & fixes | 10d | 2026-12-14 | 2026-12-25 | 27 | 2026-12-14 | 2026-12-25 | Integration Developer; Project Manager |
| 29 | 7.4 | 7.3 Rollout Sites B & C | 10d | 2026-12-28 | 2027-01-08 | 28 | 2026-12-28 | 2027-01-08 | Clinical Lead; Project Manager |
| 30 | 7.5 | M4 All sites live | 0d | 2027-01-08 | 2027-01-08 | 29 | 2027-01-08 | 2027-01-08 |  |
| 31 | 8 | **8 Transition & Closure** | 35d | 2027-01-11 | 2027-02-26 |  | 2027-01-11 | 2027-02-26 |  |
| 32 | 8.1 | 8.1 Hypercare support | 20d | 2027-01-11 | 2027-02-05 | 30 | 2027-01-11 | 2027-02-05 | Clinical Lead; Test Analyst |
| 33 | 8.2 | 8.2 Legacy decommissioning | 10d | 2027-02-08 | 2027-02-19 | 32 | 2027-02-08 | 2027-02-19 | Network/Infrastructure Engineer |
| 34 | 8.3 | 8.3 Closure & lessons learned | 5d | 2027-02-22 | 2027-02-26 | 33 | 2027-02-22 | 2027-02-26 | Project Manager |
| 35 | 8.4 | M5 Project closed | 0d | 2027-02-26 | 2027-02-26 | 34 | 2027-02-26 | 2027-02-26 |  |
